# Pfizer Continuum Project Plan

Schedule from MS Project, 2012-12-03 to 2014-01-31, A marks actual dates.

## Calendars

- Standard: Mon-Fri 08:00-12:00, 13:00-17:00; Sat-Sun off.

## Resources

| Resource |
| --- |
| Bala |
| Smita |
| Nelli |
| Paula |
| Hugh |
| Steve Matyas |
| Todd |
| Steve L |
| Sohal |
| Harsha |
| Naveen |
| BDA Team |
| Systems Team |
| QA3 |
| QA4 |
| QA5 |
| Vrushali |
| Max |
| VCDE |
| Anu |
| rushali |
| CTEP |
| caXchange |
| C3PR |
| caAERS |
| PSC |
| LV |
| BDA |
| "C3PR |
| Documentation |
| caGrid |
| QA |
| BAM |
| Edmond |
| NCI |
| SAIC-F |
| Web Team |
| Bill Dyer |
| CCTS Team |
| John S |
| Patrick |
| Architects |
| Christo |
| John |
| Rhett |
| Nellie |
| Steve |
| Kalpesh |
| David L |
| Stevel L |
| Kumar C |
| Gia |
| Wendy |
| Raj |
| Steve M |
| Lauren |
| Systems |
| CTRO |
| Hannes |
| SMEs |
| Gisele |
| Joe |
| CTRP Dev team |
| CBIIT |
| All |
| Analysts |
| TBD |
| Charles |
| ESST |
| Developers |
| Lisa |
| Christophe |
| Krishna |
| QA1 |
| QA2 |
| David |
| Security |
| Arch |
| Tech Leads |
| Paula B |
| Kalpana |
| KK |
| Abe |
| Kim |
| Vijay |
| CAT |
| George |
| Larry |
| Michael O |
| Resource 1 |
| Resource 2 |
| Resource3 |
| Resource 4 |
| Resource 5 |
| Gisele S |
| Dianne R |
| HR |
| NA |
| SL |
| ScenPro |
| 5AM |
| TP |
| EM |
| KE |
| JM |
| DL |
| Paul |
| Michael |
| Eilis |
| Team |
| Dev team |
| Ram P |
| NIH 508 team |
| Bryan |
| Bill D |
| Marina |
| Ye |
| Rashmi |
| Ann Wiley |
| Winston |
| QA* |
| Systems* |
| Sree |
| S |
| Systemss* |
| Mike |

## Schedule

| ID | WBS | Task | Type | Duration | Start | Finish | Predecessors | Complete | Remaining | Total slack | Free slack | Constraint | Resources | Work | Actual work |
| --- | --- | --- | --- | --- | --- | --- | --- | --- | --- | --- | --- | --- | --- | --- | --- |
| 1 | 1 | **caArray** |  | 305d | 2012-12-03 A | 2014-01-31 |  | 29% | 215.58d | 0d |  | start no earlier than 2012-12-03 |  | 8029.6h | 2054.2h |
| 2 | 1.1 | **caArray 2.5.1** |  | 155d | 2012-12-03 A | 2013-07-05 |  | 89% | 17.27d | 150d |  |  |  | 2269.6h | 2054.2h |
| 3 | 1.1.1 | MILESTONE: PROJECT KICKOFF |  | 1d | 2012-12-06 A | 2012-12-06 A |  | 100% |  |  |  | start no earlier than 2012-12-06 |  |  |  |
| 4 | 1.1.2 | User Support - Rembrandt, etc. |  | 3d | 2012-12-03 A | 2012-12-05 A |  | 100% |  |  |  |  | Winston; Rashmi | 48h | 48h |
| 5 | 1.1.3 | Support Apache upgrade of all tiers |  | 5d | 2012-12-06 A | 2012-12-12 A | 4 | 100% |  |  |  |  | Rashmi | 40h | 40h |
| 6 | 1.1.4 | Review TRANSCEND UAT plan |  | 1d | 2012-12-13 A | 2012-12-13 A | 5 | 100% |  |  |  |  | Rashmi | 8h | 8h |
| 7 | 1.1.5 | Vacation and Team Member Unavailability |  | 10d | 2012-12-14 A | 2012-12-27 A | 6 | 100% |  |  |  |  | Winston; Rashmi | 160h | 160h |
| 8 | 1.1.6 | OSDI: Obtain GitHub accounts for all team members |  | 1d | 2012-12-28 A | 2012-12-28 A | 7 | 100% |  |  |  |  | Winston; Rashmi | 16h | 16h |
| 9 | 1.1.7 | OSDI: Do initial analysis, generate author list, fill out checklist |  | 3d | 2012-12-31 A | 2013-01-02 A | 8 | 100% |  |  |  |  | Winston; Rashmi | 48h | 48h |
| 10 | 1.1.8 | Rewrite PMP in EPLC format and update Project Plan |  | 2d | 2013-01-03 A | 2013-01-04 A | 9 | 100% |  |  |  |  | Rashmi | 16h | 16h |
| 11 | 1.1.9 | OSDI: Obtain access to NCIP channel in GitHub (Dependency) |  | 7d | 2012-12-31 A | 2013-01-08 A | 8 | 100% |  |  |  |  | Sree; Larry | 112h | 112h |
| 12 | 1.1.10 | OSDI: Generate a local git copy |  | 2d | 2013-01-03 A | 2013-01-04 A | 9 | 100% |  |  |  |  | Winston | 16h | 16h |
| 13 | 1.1.11 | OSDI: Split software and tools from docs and test data. |  | 3d | 2013-01-07 A | 2013-01-09 A | 12 | 100% |  |  |  |  | Winston | 24h | 24h |
| 14 | 1.1.12 | OSDI: Migrate local git copy to GitHub under NCIP |  | 4d | 2013-01-10 A | 2013-01-15 A | 11, 13 | 100% |  |  |  |  | Winston | 32h | 32h |
| 15 | 1.1.13 | OSDI: Change license/copyright text and merge into GitHub repo. |  | 2d | 2013-01-16 A | 2013-01-17 A | 14 | 100% |  |  |  |  | Winston | 16h | 16h |
| 16 | 1.1.14 | OSDI: Make build changes. (Remove svn dependencies, pull jboss from the tools directory, etc.) |  | 6d | 2013-01-18 A | 2013-01-25 A | 15 | 100% |  |  |  |  | Winston | 48h | 48h |
| 17 | 1.1.15 | OSDI: Update README and other documentation |  | 1d | 2013-02-04 A | 2013-02-04 A | 16 | 100% |  |  |  |  | Winston; Rashmi | 16h | 16h |
| 18 | 1.1.16 | Section 508 Compliance Improvements |  | 21d | 2013-02-05 A | 2013-03-05 A | 17 | 100% |  |  |  |  | Winston; Rashmi | 336h | 336h |
| 19 | 1.1.17 | OSDI: Work with the Systems team to update and test the Dev AHP build. |  | 4d | 2013-02-27 A | 2013-03-04 A | 16 | 100% |  |  |  |  | Winston; Systems | 64h | 64h |
| 20 | 1.1.18 | OSDI: Final test of AHP build on Dev tier |  | 1d | 2013-03-05 A | 2013-03-05 A | 19 | 100% |  |  |  |  | Winston; Systems; Rashmi | 24h | 24h |
| 21 | 1.1.19 | OSDI: Work with the Systems team to update/test AHP on QA/STAGE |  | 15d | 2013-03-06 A | 2013-03-26 A | 20 | 100% |  |  |  |  | Winston; Rashmi | 240h | 240h |
| 22 | 1.1.20 | Performance and other Bug Fixes |  | 20d | 2013-03-12 A | 2013-04-08 A | 20 | 100% |  |  |  | start no earlier than 2013-03-12 | Winston | 160h | 160h |
| 23 | 1.1.21 | OSDI: Work with the Systems team to update/test AHP on PROD,Curation,Training |  | 15d | 2013-03-27 A | 2013-04-16 A | 21 | 100% |  |  |  |  | Winston | 120h | 120h |
| 24 | 1.1.22 | Automated Regression Testing on QA tier |  | 5d | 2013-04-09 A | 2013-04-15 A | 22 | 100% |  |  |  |  | QA* | 40h | 40h |
| 25 | 1.1.23 | Manual Regression Testing on QA tier |  | 4d | 2013-04-16 A | 2013-04-19 A | 24 | 100% |  |  |  |  | QA* | 32h | 32h |
| 26 | 1.1.24 | Installer Testing |  | 4d | 2013-04-22 A | 2013-04-25 A | 25 | 100% |  |  |  |  | QA* | 32h | 32h |
| 27 | 1.1.25 | QA reviews Section 508 compliance report |  | 2d | 2013-04-26 A | 2013-04-29 | 26 | 75% | 0.5d | 192.55d | 5d |  | QA* | 16h | 12h |
| 28 | 1.1.26 | Appscan on QA tier |  | 20d | 2013-04-09 A | 2013-05-06 A | 22 | 100% |  |  |  |  | Systems* | 160h | 160h |
| 29 | 1.1.27 | Test Results Review and Reporting |  | 3d | 2013-05-07 A | 2013-05-09 | 28, 24, 25, 26, 27 | 75% | 0.75d | 185.3d |  |  | QA* | 24h | 18h |
| 30 | 1.1.28 | Bug Fixes - Critical |  | 14d | 2013-05-10 A | 2013-06-04 A | 29 | 100% |  |  |  |  | Winston | 112h | 112h |
| 31 | 1.1.29 | QA critical fixes |  | 5d | 2013-06-04 A | 2013-06-11 A | 30 | 100% |  |  |  |  | QA* | 40h | 40h |
| 32 | 1.1.30 | Redo Appscan on QA tier |  | 10.7d | 2013-06-04 A | 2013-06-18 | 30 | 75% | 2.67d | 0d |  | finish no earlier than 2013-06-18 | Systems* | 85.6h | 64.2h |
| 33 | 1.1.31 | Deploy to STAGE |  | 1d | 2013-06-19 | 2013-06-19 | 32 |  |  | 0d |  |  | Systems* | 8h |  |
| 34 | 1.1.32 | Appscan on STAGE tier |  | 5d | 2013-06-20 | 2013-06-26 | 33 |  |  | 151d | 1d |  | Systems* | 40h |  |
| 35 | 1.1.33 | Automated Regression Testing on STAGE |  | 4d | 2013-06-20 | 2013-06-25 | 33 |  |  | 150d | 0d |  | QA* | 32h |  |
| 36 | 1.1.34 | API Testing on STAGE |  | 2d | 2013-06-26 | 2013-06-27 | 35 |  |  | 150d | 0d |  | QA* | 16h |  |
| 37 | 1.1.35 | Test Results Review and Reporting |  | 3d | 2013-06-28 | 2013-07-02 | 35, 36, 34 |  |  | 150d | 0d |  | QA* | 24h |  |
| 38 | 1.1.36 | Create release artifacts |  | 1d | 2013-06-20 | 2013-06-20 | 33 |  |  | 161d |  |  | QA*; Winston; Rashmi | 24h |  |
| 39 | 1.1.37 | Deploy to PRODUCTION |  | 2d | 2013-07-03 | 2013-07-04 | 37 |  |  | 150d | 0d |  | Systems* | 16h |  |
| 40 | 1.1.38 | Update product landing page |  | 1d | 2013-07-05 | 2013-07-05 | 39 |  |  | 150d |  |  | Rashmi | 8h |  |
| 41 | 1.1.39 | QA smoke tests PRODUCTION |  | 1d | 2013-07-05 | 2013-07-05 | 39 |  |  | 150d | 0d |  | QA*; Rashmi | 16h |  |
| 42 | 1.1.40 | MILESTONE: RELEASE 2.5.1 | milestone | 0d | 2013-07-05 | 2013-07-05 | 41 |  |  | 150d |  | start no earlier than 2012-01-09 |  |  |  |

| ID | WBS | Task | Type | Duration | Start | Finish | Predecessors | Total slack | Free slack | Constraint | Resources | Work |
| --- | --- | --- | --- | --- | --- | --- | --- | --- | --- | --- | --- | --- |
| 43 | 1.2 | **caArray 2.5.2** |  | 162d | 2013-06-20 | 2014-01-31 |  | 0d |  |  |  | 1664h |
| 44 | 1.2.1 | CSM/UPT upgrade |  | 10d | 2013-06-20 | 2013-07-03 | 33 | 0d |  |  | Winston | 80h |
| 45 | 1.2.2 | FISMA POAM |  | 20d | 2013-07-04 | 2013-07-31 | 44 | 0d |  |  | Winston; Mike | 320h |
| 46 | 1.2.3 | Support Gforge Retirement |  | 5d | 2013-08-01 | 2013-08-07 | 45 | 0d |  |  | Winston; Mike | 80h |
| 47 | 1.2.4 | Bug Fixes |  | 20d | 2013-08-08 | 2013-09-04 | 46 | 0d |  |  | Winston | 160h |
| 48 | 1.2.5 | Data Migration to File System |  | 30d | 2013-09-05 | 2013-10-16 | 47 | 0d |  |  | Winston | 240h |
| 49 | 1.2.6 | Any Improvements Requested |  | 20d | 2013-10-17 | 2013-11-13 | 48 | 0d |  |  | Winston | 160h |
| 50 | 1.2.7 | MILESTONE: EPLC REVIEW (as needed) |  | 2d | 2013-11-14 | 2013-11-15 | 49 | 0d |  | start no earlier than 2012-01-09 | Winston; Mike | 32h |
| 51 | 1.2.8 | Automated Regression Testing on QA tier |  | 5d | 2013-11-18 | 2013-11-22 | 50 | 0d |  |  | QA* | 40h |
| 52 | 1.2.9 | Manual Regression Testing on QA tier |  | 4d | 2013-11-25 | 2013-11-28 | 51 | 10d | 0d |  | QA* | 32h |
| 53 | 1.2.10 | Installer Testing |  | 4d | 2013-11-29 | 2013-12-04 | 52 | 10d | 0d |  | QA* | 32h |
| 54 | 1.2.11 | Section 508 testing on QA tier |  | 2d | 2013-12-05 | 2013-12-06 | 53 | 10d |  |  | QA* | 16h |
| 55 | 1.2.12 | Appscan on QA tier |  | 20d | 2013-11-25 | 2013-12-20 | 51 | 0d |  |  | Systems* | 160h |
| 56 | 1.2.13 | Test Results Review and Reporting |  | 3d | 2013-12-23 | 2013-12-25 | 55, 51, 52, 53, 54 | 0d |  |  | QA* | 24h |
| 57 | 1.2.14 | Deploy to STAGE |  | 1d | 2013-12-26 | 2013-12-26 | 56 | 0d |  |  | Systems* | 8h |
| 58 | 1.2.15 | Appscan on STAGE tier |  | 20d | 2013-12-27 | 2014-01-23 | 57 | 0d |  |  | Systems* | 160h |
| 59 | 1.2.16 | Automated Regression Testing on STAGE |  | 4d | 2013-12-27 | 2014-01-01 | 57 | 14d | 0d |  | QA* | 32h |
| 60 | 1.2.17 | API Testing on STAGE |  | 2d | 2014-01-02 | 2014-01-03 | 59 | 14d |  |  | QA* | 16h |
| 61 | 1.2.18 | Test Results Review and Reporting |  | 3d | 2014-01-24 | 2014-01-28 | 58, 59, 60 | 0d |  |  | QA* | 24h |
| 62 | 1.2.19 | Create release artifacts |  | 1d | 2013-12-27 | 2013-12-27 | 57 | 25d |  |  | Rashmi | 8h |
| 63 | 1.2.20 | Deploy to PRODUCTION |  | 2d | 2014-01-29 | 2014-01-30 | 61 | 0d |  |  | Systems* | 16h |
| 64 | 1.2.21 | Update product landing page |  | 1d | 2014-01-31 | 2014-01-31 | 63 | 0d |  |  | Rashmi; Systems* | 16h |
| 65 | 1.2.22 | QA smoke tests PRODUCTION |  | 1d | 2014-01-31 | 2014-01-31 | 63 | 0d |  |  | QA* | 8h |
| 66 | 1.2.23 | MILESTONE: RELEASE 2.5.2 | milestone | 0d | 2014-01-31 | 2014-01-31 | 65 | 0d |  | start no earlier than 2012-01-09 |  |  |
| 67 | 1.3 | User Support |  | 256d | 2012-12-07 | 2013-11-29 | 3 | 39.3d |  |  | Winston; Rashmi | 4096h |
| 70 | 1.4 | *QA and Systems are EXTERNAL resources/dependencies | milestone | 0d | 2012-12-03 | 2012-12-03 |  | 299.3d |  |  |  |  |
